# Gantt EPSA

Schedule from GanttProject, 2019-06-27 to 2020-06-24, baseline: 15_05_2019.
EPSA

## Calendars

- Project calendar: Mon-Sun working.

## Resources

| Resource |
| --- |
| MJT |
| ARZ |
| TLS |
| PTN |
| CMI |
| NGO |
| MRI |
| TMN |
| PTS |
| ASE |
| IGH |
| EBA |
| GLD |
| CAD |
| MKI |
| MSO |
| PAX |
| ADT |
| JMN |
| VDA |
| PCK |
| CLS |
| RMN |
| BMA |

## Schedule

| ID | WBS | Task | Type | Duration | Start | Finish | Predecessors | Baseline start | Baseline finish | Baseline duration | Resources |
| --- | --- | --- | --- | --- | --- | --- | --- | --- | --- | --- | --- |
| 1 | 1 | **Tops** |  | 363d | 2019-06-27 | 2020-06-23 |  | 2019-04-03 | 2020-02-16 | 320d |  |
| 2 | 1.1 | Top Appro | milestone | 0d | 2019-06-27 | 2019-06-27 |  | 2019-06-27 | 2019-06-27 | 0d |  |
| 3 | 1.2 | Top Saison | milestone | 0d | 2019-09-30 | 2019-09-30 |  | 2019-09-30 | 2019-09-30 | 0d |  |
| 4 | 1.3 | Top Synthèse | milestone | 0d | 2019-10-02 | 2019-10-02 |  | 2019-10-02 | 2019-10-02 | 0d |  |
| 5 | 1.4 | Top Copeau 1 | milestone | 0d | 2019-11-06 | 2019-11-06 |  | 2019-11-06 | 2019-11-06 | 0d |  |
| 6 | 1.5 | Top Copeau 2 | milestone | 0d | 2019-11-20 | 2019-11-20 |  | 2019-11-20 | 2019-11-20 | 0d |  |
| 7 | 1.6 | Top Organe | milestone | 0d | 2020-02-05 | 2020-02-05 |  | 2020-02-05 | 2020-02-05 | 0d |  |
| 8 | 1.7 | Top Véhicule | milestone | 0d | 2020-02-19 | 2020-02-19 |  | 2020-02-19 | 2020-02-19 | 0d |  |
| 9 | 1.8 | Top Moteur | milestone | 0d | 2020-03-04 | 2020-03-04 |  | 2020-03-04 | 2020-03-04 | 0d |  |
| 10 | 1.9 | Top Qualif | milestone | 0d | 2020-03-17 | 2020-03-17 |  | 2020-03-17 | 2020-03-17 | 0d |  |
| 11 | 1.10 | Top Compet | milestone | 0d | 2020-06-24 | 2020-06-24 |  | 2020-06-24 | 2020-06-24 | 0d |  |
| 12 | 2 | Livrables |  | 363d | 2019-06-27 | 2020-06-23 | 2, 11FF | 2019-05-08 | 2019-05-27 | 20d |  |
| 13 | 3 | Carnet de conception |  | 51d | 2019-07-01 | 2019-08-20 |  |  |  |  | TLS |
| 14 | 4 | Nomenclature |  | 38d | 2019-07-18 | 2019-08-24 |  |  |  |  | TLS |
| 15 | 5 | **LAS** |  | 98d | 2019-08-19 | 2019-11-24 |  | 2019-05-08 | 2019-05-22 | 15d |  |
| 16 | 5.1 | **Cinématique** |  | 70d | 2019-08-19 | 2019-10-27 |  |  |  |  |  |
| 17 | 5.1.1 | Points de LAS avant |  | 14d | 2019-08-19 | 2019-09-01 |  |  |  |  | MKI; PAX |
| 18 | 5.1.2 | Points de LAS arrière |  | 21d | 2019-08-26 | 2019-09-15 |  |  |  |  | MKI; PAX |
| 19 | 5.1.3 | Géométrie de suspension |  | 35d | 2019-08-26 | 2019-09-29 |  |  |  |  | PAX |
| 20 | 5.1.4 | Géométrie d'anti-roulis |  | 14d | 2019-09-16 | 2019-09-29 |  |  |  |  | PAX |
| 21 | 5.1.5 | Seconde itération |  | 28d | 2019-09-30 | 2019-10-27 | 17, 18, 19, 20 |  |  |  | MSO; PAX |
| 22 | 5.2 | **Cas de charge** |  | 66d | 2019-09-02 | 2019-11-06 |  |  |  |  |  |
| 23 | 5.2.1 | Logiciel? |  | 4d | 2019-09-02 | 2019-09-05 |  |  |  |  | MKI |
| 24 | 5.2.2 | Paul Clauzel |  | 3d | 2019-09-06 | 2019-09-08 | 23 |  |  |  | MKI |
| 25 | 5.2.3 | LAS Auto |  | 14d | 2019-09-09 | 2019-09-22 | 24 |  |  |  | MKI |
| 26 | 5.2.4 | Modèle |  | 7d | 2019-09-23 | 2019-09-29 | 25 |  |  |  | MKI |
| 27 | 5.2.5 | Cas de charge |  | 14d | 2019-09-30 | 2019-10-13 | 26 |  |  |  | MKI |
| 28 | 5.2.6 | Vérification |  | 7d | 2019-10-14 | 2019-10-20 | 27 |  |  |  | MKI |
| 29 | 5.2.7 | Itérations |  | 7d | 2019-10-21 | 2019-10-27 | 28 |  |  |  | MKI |
| 30 | 5.2.8 | Fin des cas de charges |  | 10d | 2019-10-28 | 2019-11-06 | 29 |  |  |  | MKI |

Notes:
- 23: Mecamaster ou Optimum Kinematics?
- 24: Le contacter pour la licence Mecamaster
- 25: A préparer
- 27: Premiers cas de charges
- 28: A voir avec Paul Clozel

| ID | WBS | Task | Duration | Start | Finish | Predecessors | Resources |
| --- | --- | --- | --- | --- | --- | --- | --- |
| 31 | 5.3 | **Roue équipée** | 82d | 2019-08-19 | 2019-11-08 |  |  |
| 32 | 5.3.1 | Choix des pneus | 12d | 2019-08-19 | 2019-08-30 | 17SS | MKI; MSO |
| 33 | 5.3.2 | Architecture | 7d | 2019-09-02 | 2019-09-08 |  | MSO |
| 34 | 5.3.3 | Modifications | 7d | 2019-09-09 | 2019-09-15 | 33 | MSO |
| 35 | 5.3.4 | Frette de frein | 7d | 2019-09-16 | 2019-09-22 | 34 | MSO |
| 36 | 5.3.5 | Ebauche CATIA | 14d | 2019-09-23 | 2019-10-06 | 35 | MSO |
| 37 | 5.3.6 | Retour points de LAS | 14d | 2019-09-30 | 2019-10-13 |  | MSO |
| 38 | 5.3.7 | Optimisation | 26d | 2019-10-07 | 2019-11-01 |  | MSO |
| 39 | 5.3.8 | Fabricabilité | 7d | 2019-11-02 | 2019-11-08 | 38 | MSO |
| 40 | 5.4 | **Triangles** | 84d | 2019-09-02 | 2019-11-24 |  |  |
| 41 | 5.4.1 | Choix réglage | 7d | 2019-09-16 | 2019-09-22 |  | PCK |
| 42 | 5.4.2 | Dimensionnement biellettes | 7d | 2019-09-23 | 2019-09-29 | 41 | PCK |
| 43 | 5.4.3 | Dimensionnement visserie | 7d | 2019-09-23 | 2019-09-29 | 41 | PCK |
| 44 | 5.4.4 | Choix rotules | 7d | 2019-09-30 | 2019-10-06 | 43 | PCK |
| 45 | 5.4.5 | Choix entretoises | 7d | 2019-10-07 | 2019-10-13 | 44 | PCK |
| 46 | 5.4.6 | Concertation | 7d | 2019-09-02 | 2019-09-08 |  | PCK |
| 47 | 5.4.7 | Dimenssionnement des tubes | 7d | 2019-10-14 | 2019-10-20 | 27, 46 | PCK |
| 48 | 5.4.8 | Dimensionnement des inserts | 7d | 2019-10-21 | 2019-10-27 | 47 | PCK |
| 49 | 5.4.9 | Essais collages | 28d | 2019-10-28 | 2019-11-24 | 48 | PCK |
| 50 | 5.5 | **Suspension** | 70d | 2019-08-19 | 2019-10-27 |  |  |
| 51 | 5.5.1 | Contacter GTE | 7d | 2019-08-19 | 2019-08-25 | 19SF | PAX |
| 52 | 5.5.2 | Pivot | 7d | 2019-09-30 | 2019-10-06 | 19 | PCK |
| 53 | 5.5.3 | Basculeurs | 14d | 2019-10-14 | 2019-10-27 |  | PCK |
| 54 | 5.6 | **Anti-roulis** | 28d | 2019-09-30 | 2019-10-27 |  |  |
| 55 | 5.6.1 | Modèle efforts | 14d | 2019-09-30 | 2019-10-13 | 20 | PAX |
| 56 | 5.6.2 | Dimenssionnement de la barre de torsion | 14d | 2019-10-14 | 2019-10-27 | 55 | PAX |
| 57 | 5.6.3 | Couteaux | 14d | 2019-09-30 | 2019-10-13 | 20 | PAX |
| 58 | 5.6.4 | Pivot | 7d | 2019-10-14 | 2019-10-20 | 57 | PAX |
| 59 | 5.6.5 | Coussinets | 7d | 2019-10-21 | 2019-10-27 | 58 | PAX |

Notes:
- 34: Recherche des éléments où il faut investir du temps
- 35: Etudier la faisabilité d'un frette combiné au moyeu
- 41: Voir Claude Rouelle : pas différents de chaque côté des biellettes
- 46: Concertation LAS, Châssis
- 51: Pour la démarche
- 55: Pour la démarche
- 56: Pour la démarche
- 57: Pour la démarche
- 58: Pour la démarche
- 59: Pour la démarche

| ID | WBS | Task | Duration | Start | Finish | Predecessors | Complete | Baseline start | Baseline finish | Baseline duration | Resources |
| --- | --- | --- | --- | --- | --- | --- | --- | --- | --- | --- | --- |
| 60 | 5.7 | **Direction** | 35d | 2019-09-16 | 2019-10-20 |  |  |  |  |  |  |
| 61 | 5.7.1 | Cardan | 14d | 2019-09-16 | 2019-09-29 |  |  |  |  |  |  |
| 62 | 5.7.2 | Colonne de direction | 7d | 2019-09-30 | 2019-10-06 | 61 |  |  |  |  |  |
| 63 | 5.7.3 | Finalisation cinématique | 7d | 2019-10-07 | 2019-10-13 | 17, 62 |  |  |  |  |  |
| 64 | 5.7.4 | Pivot et manchon | 7d | 2019-10-14 | 2019-10-20 | 63 |  |  |  |  |  |
| 65 | 5.8 | **Freinage** | 21d | 2019-09-16 | 2019-10-06 |  |  |  |  |  |  |
| 66 | 5.8.1 | Répartition freinage | 14d | 2019-09-16 | 2019-09-29 |  |  |  |  |  | ADT |
| 67 | 5.8.2 | Dimenssionnement disques | 14d | 2019-09-23 | 2019-10-06 |  |  |  |  |  | ADT |
| 68 | 5.8.3 | Dimenssionnement étrier | 14d | 2019-09-23 | 2019-10-06 |  |  |  |  |  | ADT |
| 69 | 5.9 | **Pédalier** | 49d | 2019-09-16 | 2019-11-03 |  |  |  |  |  |  |
| 70 | 5.9.1 | Accélérateur | 35d | 2019-09-16 | 2019-10-20 |  |  |  |  |  | JMN |
| 71 | 5.9.2 | Frein | 35d | 2019-09-30 | 2019-11-03 |  |  |  |  |  | JMN |
| 72 | 6 | **Frame** | 100d | 2019-08-12 | 2019-11-19 |  | 2% | 2019-05-08 | 2019-05-18 | 11d |  |
| 73 | 6.1 | **Structure tubulaire** | 98d | 2019-08-12 | 2019-11-17 |  | 4% |  |  |  |  |
| 74 | 6.1.1 | Premières esquisses | 14d | 2019-08-12 | 2019-08-25 |  | 50% |  |  |  | CMI |
| 75 | 6.1.2 | Points de LAS | 21d | 2019-08-26 | 2019-09-15 | 74 |  |  |  |  | CMI |
| 76 | 6.1.3 | Ergonomie | 14d | 2019-08-19 | 2019-09-01 |  |  |  |  |  | CMI |
| 77 | 6.1.4 | Moteur - Echappement | 21d | 2019-09-02 | 2019-09-22 | 76 |  |  |  |  | CMI |
| 78 | 6.1.5 | Finalisation filaire | 14d | 2019-09-16 | 2019-09-29 |  |  |  |  |  | CMI |
| 79 | 6.1.6 | Seconde itération | 14d | 2019-09-30 | 2019-10-13 | 21SS, 78 |  |  |  |  | CMI |
| 80 | 6.1.7 | Diamètres des tubes | 14d | 2019-09-30 | 2019-10-13 | 78 |  |  |  |  | CMI |
| 81 | 6.1.8 | Vérif règlement | 7d | 2019-10-14 | 2019-10-20 | 80 |  |  |  |  | CMI |
| 82 | 6.1.9 | Raideur en torsions | 14d | 2019-10-14 | 2019-10-27 | 80 |  |  |  |  | CMI |
| 83 | 6.1.10 | Autres cas de charge | 14d | 2019-10-21 | 2019-11-03 |  |  |  |  |  | CMI |
| 84 | 6.1.11 | Vérif règlement | 14d | 2019-11-04 | 2019-11-17 | 82, 83 |  |  |  |  | CMI |

Notes:
- 65: En collaboration avec la roue équipée et le pédalier

| ID | WBS | Task | Duration | Start | Finish | Predecessors | Resources |
| --- | --- | --- | --- | --- | --- | --- | --- |
| 85 | 6.2 | **Equipements** | 58d | 2019-09-23 | 2019-11-19 |  |  |
| 86 | 6.2.1 | Chappes paramétrables | 35d | 2019-09-23 | 2019-10-27 |  |  |
| 87 | 6.2.2 | Suivi des chappes | 44d | 2019-10-07 | 2019-11-19 | 6FF | TLS |
| 88 | 6.2.3 | Anti-intrusion plate | 14d | 2019-10-14 | 2019-10-27 | 79 | CMI |
| 89 | 6.2.4 | Pare-feu | 14d | 2019-10-28 | 2019-11-10 | 88 | CMI |
| 90 | 6.2.5 | Fond plat | 14d | 2019-10-14 | 2019-10-27 | 79 | PTS |
| 91 | 7 | **Aéro** | 98d | 2019-08-12 | 2019-11-17 |  |  |
| 92 | 7.1 | **Carrosserie** | 63d | 2019-09-16 | 2019-11-17 |  |  |
| 93 | 7.1.1 | REX et étude concurrence | 14d | 2019-09-16 | 2019-09-29 |  | PTS |
| 94 | 7.1.2 | Premier version | 14d | 2019-09-30 | 2019-10-13 | 78, 93 | PTS |
| 95 | 7.1.3 | Optimisation aéro | 14d | 2019-10-14 | 2019-10-27 | 94 | PTS |
| 96 | 7.1.4 | Seconde itération | 7d | 2019-10-28 | 2019-11-03 | 79, 95 | PTS |
| 97 | 7.1.5 | Fixation aéro | 14d | 2019-11-04 | 2019-11-17 | 96 | PTS |
| 98 | 7.2 | **Méthode numérique** | 21d | 2019-08-19 | 2019-09-08 |  |  |
| 99 | 7.2.1 | Simulation mécanique | 21d | 2019-08-19 | 2019-09-08 |  | NGO |
| 100 | 7.3 | **Process de production** | 28d | 2019-09-02 | 2019-09-29 |  |  |
| 101 | 7.3.1 | Process de production | 28d | 2019-09-02 | 2019-09-29 |  | NGO; MRI; TMN |
| 102 | 7.4 | **Ouies** | 91d | 2019-08-12 | 2019-11-10 |  |  |
| 103 | 7.4.1 | Concept ouies | 21d | 2019-08-12 | 2019-09-01 |  | PTS |
| 104 | 7.4.2 | Positionnement radiateur | 14d | 2019-08-26 | 2019-09-08 |  | PTS |
| 105 | 7.4.3 | Optimisation flux radiateur | 28d | 2019-08-26 | 2019-09-22 | 104SS | PTS |
| 106 | 7.4.4 | Optimisation aéro | 14d | 2019-09-16 | 2019-09-29 |  | PTS |
| 107 | 7.4.5 | Résistance mécanique | 28d | 2019-09-30 | 2019-10-27 | 106 | PTS |
| 108 | 7.4.6 | Détermination d'un process | 28d | 2019-09-30 | 2019-10-27 | 106 | PTS |
| 109 | 7.4.7 | Test du process | 28d | 2019-10-14 | 2019-11-10 |  | PTS |

Notes:
- 106: Après les ailes avant et arrière
- 108: Voir reamrques EPFL / Contacter Alexis Couturier si besoin

| ID | WBS | Task | Duration | Start | Finish | Predecessors | Complete | Baseline start | Baseline finish | Baseline duration | Resources |
| --- | --- | --- | --- | --- | --- | --- | --- | --- | --- | --- | --- |
| 110 | 7.5 | **Aile arrière** | 56d | 2019-09-09 | 2019-11-03 |  |  |  |  |  |  |
| 111 | 7.5.1 | Concept d'attaches | 14d | 2019-09-09 | 2019-09-22 |  |  |  |  |  | TMN |
| 112 | 7.5.2 | Méthode de réglage | 14d | 2019-09-16 | 2019-09-29 |  |  |  |  |  | TMN |
| 113 | 7.5.3 | Modèle d'efforts sur l'aile | 7d | 2019-09-30 | 2019-10-06 | 112 |  |  |  |  | TMN |
| 114 | 7.5.4 | Dessin des inserts | 21d | 2019-10-07 | 2019-10-27 | 101, 113 |  |  |  |  | TMN |
| 115 | 7.5.5 | Simulation mécanique | 28d | 2019-10-07 | 2019-11-03 | 99, 101, 113 |  |  |  |  | TMN |
| 116 | 7.5.6 | Calcul de déflection | 21d | 2019-10-14 | 2019-11-03 |  |  |  |  |  | TMN |
| 117 | 7.6 | **Aile avant** | 63d | 2019-09-02 | 2019-11-03 |  |  |  |  |  |  |
| 118 | 7.6.1 | Simplification de l'aile | 21d | 2019-09-02 | 2019-09-22 |  |  |  |  |  | MRI |
| 119 | 7.6.2 | Concept d'attaches | 14d | 2019-09-09 | 2019-09-22 |  |  |  |  |  | TMN |
| 120 | 7.6.3 | Méthode de réglage | 14d | 2019-09-16 | 2019-09-29 |  |  |  |  |  | TMN |
| 121 | 7.6.4 | Modèle d'efforts sur l'aile | 7d | 2019-09-30 | 2019-10-06 | 120 |  |  |  |  | TMN |
| 122 | 7.6.5 | Dessin des inserts | 21d | 2019-10-07 | 2019-10-27 | 101, 121 |  |  |  |  | TMN |
| 123 | 7.6.6 | Simulation mécanique | 28d | 2019-10-07 | 2019-11-03 | 99, 101, 121 |  |  |  |  | TMN |
| 124 | 7.6.7 | Calcul de déflection | 21d | 2019-10-14 | 2019-11-03 |  |  |  |  |  | TMN |
| 125 | 8 | **Motorisation** | 98d | 2019-08-05 | 2019-11-10 |  | 8% | 2019-05-06 | 2019-05-20 | 15d |  |
| 126 | 8.1 | **Admission** | 56d | 2019-08-12 | 2019-10-06 |  |  |  |  |  |  |
| 127 | 8.1.1 | Contact fournisseur | 14d | 2019-09-02 | 2019-09-15 |  |  |  |  |  | TLS |
| 128 | 8.1.2 | Concept bride guillotine | 21d | 2019-08-12 | 2019-09-01 |  |  |  |  |  | TLS |
| 129 | 8.1.3 | Concept plenum admission | 21d | 2019-08-12 | 2019-09-01 |  |  |  |  |  | TLS |
| 130 | 8.1.4 | Etudes aéro | 28d | 2019-08-19 | 2019-09-15 |  |  |  |  |  | TLS |
| 131 | 8.1.5 | Audit Volvo | 7d | 2019-09-16 | 2019-09-22 | 130 |  |  |  |  | TLS |
| 132 | 8.1.6 | Calcul FEM | 7d | 2019-09-16 | 2019-09-22 | 130 |  |  |  |  | TLS |
| 133 | 8.1.7 | Validation Romain | 14d | 2019-09-23 | 2019-10-06 | 132 |  |  |  |  | TLS |
| 134 | 8.1.8 | Validation académiciens | 14d | 2019-09-23 | 2019-10-06 | 132 |  |  |  |  | TLS |

| ID | WBS | Task | Duration | Start | Finish | Predecessors | Complete | Resources |
| --- | --- | --- | --- | --- | --- | --- | --- | --- |
| 135 | 8.2 | **Echappement** | 56d | 2019-08-12 | 2019-10-06 |  |  |  |
| 136 | 8.2.1 | Contact Bery | 7d | 2019-09-02 | 2019-09-08 |  |  | MJT |
| 137 | 8.2.2 | Concept échappement | 7d | 2019-08-12 | 2019-08-18 |  |  | MJT |
| 138 | 8.2.3 | Volume enveloppe | 14d | 2019-08-19 | 2019-09-01 | 137 |  | MJT |
| 139 | 8.2.4 | CATIA | 21d | 2019-09-02 | 2019-09-22 | 138 |  | MJT |
| 140 | 8.2.5 | Validation Romain | 14d | 2019-09-23 | 2019-10-06 | 139 |  | MJT |
| 141 | 8.2.6 | Validation académiciens | 14d | 2019-09-23 | 2019-10-06 | 139 |  | MJT |
| 142 | 8.3 | **Carto** | 7d | 2019-10-07 | 2019-10-13 |  |  |  |
| 143 | 8.3.1 | Prevoir passage au banc de Givors | 7d | 2019-10-07 | 2019-10-13 | 133, 134, 140, 141 |  | MJT |
| 144 | 8.4 | **Refroidissement** | 35d | 2019-08-05 | 2019-09-08 |  | 60% |  |
| 145 | 8.4.1 | Dimensionnement | 21d | 2019-08-05 | 2019-08-25 |  | 100% | ASE |
| 146 | 8.4.2 | Itération 2 | 14d | 2019-08-26 | 2019-09-08 | 145 |  | ASE |
| 147 | 8.5 | **Circuit d'essence** | 56d | 2019-09-16 | 2019-11-10 |  |  |  |
| 148 | 8.5.1 | Réservoir | 7d | 2019-09-16 | 2019-09-22 |  |  |  |
| 149 | 8.5.2 | Pompe à essence | 14d | 2019-09-23 | 2019-10-06 | 148 |  |  |
| 150 | 8.5.3 | Circuit d'essence | 14d | 2019-10-07 | 2019-10-20 | 149 |  |  |
| 151 | 8.5.4 | Tuyau de remplissage | 14d | 2019-10-07 | 2019-10-20 | 149 |  |  |
| 152 | 8.5.5 | Modèle CATIA | 21d | 2019-10-21 | 2019-11-10 | 150, 151 |  |  |
| 153 | 8.5.6 | Protection thermique | 7d | 2019-10-21 | 2019-10-27 | 148, 149, 150 |  |  |
| 154 | 8.6 | **Transmission secondaire** | 49d | 2019-09-16 | 2019-11-03 |  |  |  |
| 155 | 8.6.1 | Contacter CME et MPY | 7d | 2019-09-16 | 2019-09-22 |  |  |  |
| 156 | 8.6.2 | Piste amélioration | 14d | 2019-09-16 | 2019-09-29 |  |  |  |
| 157 | 8.6.3 | Différentiel | 7d | 2019-09-16 | 2019-09-22 |  |  |  |
| 158 | 8.6.4 | Excentriques | 21d | 2019-09-23 | 2019-10-13 | 157 |  |  |
| 159 | 8.6.5 | Porte-excentriques | 21d | 2019-09-23 | 2019-10-13 | 157 |  |  |
| 160 | 8.6.6 | Rapport de transmission secondaire | 21d | 2019-09-16 | 2019-10-06 |  |  |  |
| 161 | 8.6.7 | Pignon - Couronne | 14d | 2019-09-23 | 2019-10-06 |  |  |  |
| 162 | 8.6.8 | Porte couronne | 14d | 2019-10-07 | 2019-10-20 | 161 |  |  |
| 163 | 8.6.9 | Chainshield | 14d | 2019-10-21 | 2019-11-03 | 162 |  |  |

Notes:
- 146: En lien avec le dessin des ouies de PTS
- 154: Ressources: / ASE et une recrue semble correct et moins risqué que deux recrues. / Une des recrues sera donc affecté au circuit d'essence.
- 162: Discuter avec Bertrand Houx pour usinage à Centrale
- 163: Ne pas lancer la prod, faire un template au fablab d'abord et usiner le crai quand c'est bon

| ID | WBS | Task | Duration | Start | Finish | Predecessors | Baseline start | Baseline finish | Baseline duration | Resources |
| --- | --- | --- | --- | --- | --- | --- | --- | --- | --- | --- |
| 164 | 9 | **SEISM** | 84d | 2019-09-02 | 2019-11-24 |  | 2019-05-10 | 2019-05-14 | 5d |  |
| 165 | 9.1 | **Faisceau** | 84d | 2019-09-02 | 2019-11-24 |  |  |  |  |  |
| 166 | 9.1.1 | Faisceau LV | 21d | 2019-09-02 | 2019-09-22 |  |  |  |  | CLS |
| 167 | 9.1.2 | Acquisition de données | 14d | 2019-09-09 | 2019-09-22 |  |  |  |  | CLS |
| 168 | 9.1.3 | Faisceau HV | 21d | 2019-09-23 | 2019-10-13 | 166 |  |  |  | CLS |
| 169 | 9.1.4 | Batterie | 14d | 2019-09-30 | 2019-10-13 |  |  |  |  | CLS |
| 170 | 9.1.5 | Dimensionnement câble | 14d | 2019-10-07 | 2019-10-20 |  |  |  |  | CLS |
| 171 | 9.1.6 | Placer les boîtes | 14d | 2019-10-14 | 2019-10-27 |  |  |  |  | CLS |
| 172 | 9.1.7 | Contacter Souriaux | 7d | 2019-09-02 | 2019-09-08 |  |  |  |  | CLS |
| 173 | 9.1.8 | Choix connecteur | 14d | 2019-10-14 | 2019-10-27 | 172 |  |  |  | CLS |
| 174 | 9.1.9 | Modèle CATIA | 28d | 2019-10-28 | 2019-11-24 | 171, 173 |  |  |  | CLS |
| 175 | 9.2 | **Passage de rapport** | 70d | 2019-09-02 | 2019-11-10 |  |  |  |  |  |
| 176 | 9.2.1 | Dimensionnement moteur | 28d | 2019-09-02 | 2019-09-29 |  |  |  |  | BMA |
| 177 | 9.2.2 | Dimensionnement réducteur | 28d | 2019-09-02 | 2019-09-29 |  |  |  |  | BMA |
| 178 | 9.2.3 | Reprendre le code | 28d | 2019-09-30 | 2019-10-27 | 176, 177 |  |  |  | BMA |
| 179 | 9.2.4 | Shield | 28d | 2019-10-14 | 2019-11-10 |  |  |  |  | BMA |
| 180 | 9.3 | **Tableau de bord** | 70d | 2019-09-02 | 2019-11-10 |  |  |  |  |  |
| 181 | 9.3.1 | Liste des afficheurs | 14d | 2019-09-02 | 2019-09-15 |  |  |  |  | RMN |
| 182 | 9.3.2 | Commande des afficheurs | 14d | 2019-09-09 | 2019-09-22 |  |  |  |  | RMN |
| 183 | 9.3.3 | Liste des boutons | 14d | 2019-09-16 | 2019-09-29 | 181 |  |  |  | RMN |
| 184 | 9.3.4 | Dessin TdB | 14d | 2019-10-14 | 2019-10-27 | 79, 181, 183 |  |  |  | RMN |
| 185 | 9.3.5 | Code sans CAN | 56d | 2019-09-16 | 2019-11-10 | 181 |  |  |  | RMN |
| 186 | 9.3.6 | Insérer le CAN | 14d | 2019-10-28 | 2019-11-10 | 185FF |  |  |  | RMN |
| 187 | 9.3.7 | Dessin des cartes | 28d | 2019-10-14 | 2019-11-10 | 185FF, 186FF |  |  |  | RMN |

Notes:
- 177: Choisir entre Atomix et Optimus
- 179: Inclure la connection CAN

| ID | WBS | Task | Duration | Start | Finish | Predecessors |
| --- | --- | --- | --- | --- | --- | --- |
| 188 | 9.4 | **Palettes** | 56d | 2019-09-09 | 2019-11-03 |  |
| 189 | 9.4.1 | Concept | 21d | 2019-09-09 | 2019-09-29 |  |
| 190 | 9.4.2 | Maquette CATIA | 21d | 2019-09-16 | 2019-10-06 |  |
| 191 | 9.4.3 | Commande pour proto | 7d | 2019-10-07 | 2019-10-13 | 189, 190 |
| 192 | 9.4.4 | Impression 3D | 7d | 2019-10-07 | 2019-10-13 | 190 |
| 193 | 9.4.5 | Proto | 7d | 2019-10-14 | 2019-10-20 | 191, 192 |
| 194 | 9.4.6 | Tests | 14d | 2019-10-21 | 2019-11-03 | 193 |
