# Gantt EPSA

Schedule from GanttProject, 2019-06-27 to 2020-09-30, baseline: 15_05_2019.
EPSA

## Calendars

- Project calendar: Mon-Sun working.

## Resources

| Resource |
| --- |
| MJT |
| ARZ |
| TLS |
| PTN |
| CMI |
| NGO |
| MRI |
| ACO |
| TMN |
| PTS |
| ASE |
| IGH |
| EBA |
| GLD |
| CAD |
| MKI |
| MSO |
| PAX |
| EPZ |
| SGX |
| JMN |
| CLS |
| RMN |
| BMA |

## Schedule

| ID | WBS | Task | Type | Duration | Start | Finish | Predecessors | Complete | Baseline start | Baseline finish | Baseline duration | Resources |
| --- | --- | --- | --- | --- | --- | --- | --- | --- | --- | --- | --- | --- |
| 1 | 1 | **Tops** |  | 363d | 2019-06-27 | 2020-06-23 |  |  | 2019-04-03 | 2020-02-16 | 320d |  |
| 2 | 1.1 | Top Appro | milestone | 0d | 2019-06-27 | 2019-06-27 |  |  | 2019-06-27 | 2019-06-27 | 0d |  |
| 3 | 1.2 | Top Saison | milestone | 0d | 2019-09-30 | 2019-09-30 |  |  | 2019-09-30 | 2019-09-30 | 0d |  |
| 4 | 1.3 | Top Synthèse | milestone | 0d | 2019-10-09 | 2019-10-09 |  |  | 2019-10-02 | 2019-10-02 | 0d |  |
| 5 | 1.4 | Top Copeau 1 | milestone | 0d | 2019-11-13 | 2019-11-13 |  |  | 2019-11-06 | 2019-11-06 | 0d |  |
| 6 | 1.5 | Top Copeau 2 | milestone | 0d | 2019-11-20 | 2019-11-20 |  |  | 2019-11-20 | 2019-11-20 | 0d |  |
| 7 | 1.6 | Top Organe | milestone | 0d | 2020-02-05 | 2020-02-05 |  |  | 2020-02-05 | 2020-02-05 | 0d |  |
| 8 | 1.7 | Top Véhicule | milestone | 0d | 2020-02-19 | 2020-02-19 |  |  | 2020-02-19 | 2020-02-19 | 0d |  |
| 9 | 1.8 | Top Moteur | milestone | 0d | 2020-03-04 | 2020-03-04 |  |  | 2020-03-04 | 2020-03-04 | 0d |  |
| 10 | 1.9 | Top Qualif | milestone | 0d | 2020-03-17 | 2020-03-17 |  |  | 2020-03-17 | 2020-03-17 | 0d |  |
| 11 | 1.10 | Top Compet | milestone | 0d | 2020-06-24 | 2020-06-24 |  |  | 2020-06-24 | 2020-06-24 | 0d |  |
| 12 | 2 | **Vacances ECL** |  | 127d | 2019-10-26 | 2020-02-29 |  |  |  |  |  |  |
| 13 | 2.1 | Toussaint |  | 10d | 2019-10-26 | 2019-11-04 |  |  |  |  |  |  |
| 14 | 2.2 | Noel |  | 17d | 2019-12-21 | 2020-01-06 |  |  |  |  |  |  |
| 15 | 2.3 | Hivers |  | 1d | 2020-02-29 | 2020-02-29 |  |  |  |  |  |  |
| 16 | 3 | **Vacances partenaires** |  | 99d | 2020-06-24 | 2020-09-30 |  |  |  |  |  |  |
| 17 | 3.1 | Giraudière |  | 99d | 2020-06-24 | 2020-09-30 |  |  |  |  |  |  |
| 18 | 3.2 | Boisard |  | 99d | 2020-06-24 | 2020-09-30 |  |  |  |  |  |  |
| 19 | 4 | **Global** |  | 363d | 2019-06-27 | 2020-06-23 |  |  |  |  |  |  |
| 20 | 4.1 | Livrables |  | 363d | 2019-06-27 | 2020-06-23 | 2, 11FF |  | 2019-05-08 | 2019-05-27 | 20d |  |
| 21 | 4.2 | Carnet de conception |  | 51d | 2019-08-01 | 2019-09-20 |  |  |  |  |  | TLS |
| 22 | 4.3 | Nomenclature |  | 51d | 2019-08-01 | 2019-09-20 |  |  |  |  |  | TLS |
| 23 | 5 | **LAS** |  | 110d | 2019-08-19 | 2019-12-06 |  | 4% | 2019-05-08 | 2019-05-22 | 15d |  |
| 24 | 5.1 | **Cinématique** |  | 63d | 2019-08-19 | 2019-10-20 |  | 15% |  |  |  |  |
| 25 | 5.1.1 | Gabarit de châssis |  | 14d | 2019-09-16 | 2019-09-29 |  |  |  |  |  |  |
| 26 | 5.1.2 | Points de LAS avant |  | 35d | 2019-08-19 | 2019-09-22 |  | 30% |  |  |  | MKI; MSO; PAX |
| 27 | 5.1.3 | Points de LAS arrière |  | 28d | 2019-08-26 | 2019-09-22 |  | 20% |  |  |  | MKI; MSO; PAX |
| 28 | 5.1.4 | Seconde itération |  | 28d | 2019-09-23 | 2019-10-20 | 26, 27 |  |  |  |  | MKI; MSO; PAX |

| ID | WBS | Task | Duration | Start | Finish | Predecessors | Complete | Resources |
| --- | --- | --- | --- | --- | --- | --- | --- | --- |
| 29 | 5.2 | **Cas de charge** | 62d | 2019-09-16 | 2019-11-16 |  |  |  |
| 30 | 5.2.1 | Paul Clauzel | 3d | 2019-09-16 | 2019-09-18 |  |  | MKI |
| 31 | 5.2.2 | LAS Auto | 14d | 2019-09-19 | 2019-10-02 | 30 |  | MKI |
| 32 | 5.2.3 | Modèle | 7d | 2019-10-03 | 2019-10-09 | 31 |  | MKI |
| 33 | 5.2.4 | Cas de charge | 14d | 2019-10-10 | 2019-10-23 | 32 |  | MKI |
| 34 | 5.2.5 | Vérification | 7d | 2019-10-24 | 2019-10-30 | 33 |  | MKI |
| 35 | 5.2.6 | Itérations | 7d | 2019-10-31 | 2019-11-06 | 34 |  | MKI |
| 36 | 5.2.7 | Fin des cas de charges | 10d | 2019-11-07 | 2019-11-16 | 35 |  | MKI |
| 37 | 5.3 | **Roue équipée** | 110d | 2019-08-19 | 2019-12-06 |  | 12% |  |
| 38 | 5.3.1 | Choix des pneus | 12d | 2019-08-19 | 2019-08-30 | 26SS | 100% | MKI; MSO |
| 39 | 5.3.2 | Architecture | 7d | 2019-10-07 | 2019-10-13 |  |  | MSO |
| 40 | 5.3.3 | Modifications | 7d | 2019-10-07 | 2019-10-13 | 39SS |  | MSO |
| 41 | 5.3.4 | Frette de frein | 7d | 2019-10-14 | 2019-10-20 | 40 |  | MSO |
| 42 | 5.3.5 | Ebauche CATIA | 14d | 2019-10-21 | 2019-11-03 | 41 |  | MSO |
| 43 | 5.3.6 | Retour points de LAS | 14d | 2019-10-21 | 2019-11-03 | 42SS |  | MSO |
| 44 | 5.3.7 | Optimisation | 26d | 2019-11-04 | 2019-11-29 | 42 |  | MSO |
| 45 | 5.3.8 | Fabricabilité | 7d | 2019-11-30 | 2019-12-06 | 44 |  | MSO |
| 46 | 5.4 | **Triangles** | 87d | 2019-09-09 | 2019-12-04 |  |  |  |
| 47 | 5.4.1 | Choix réglage | 7d | 2019-09-16 | 2019-09-22 |  |  | MKI |
| 48 | 5.4.2 | Dimensionnement biellettes | 7d | 2019-09-23 | 2019-09-29 | 47 |  | MKI |
| 49 | 5.4.3 | Dimensionnement visserie | 7d | 2019-09-23 | 2019-09-29 | 47 |  | MKI |
| 50 | 5.4.4 | Choix rotules | 7d | 2019-09-30 | 2019-10-06 | 49 |  | MKI |
| 51 | 5.4.5 | Choix entretoises | 7d | 2019-10-07 | 2019-10-13 | 50 |  | MKI |
| 52 | 5.4.6 | Concertation | 7d | 2019-09-09 | 2019-09-15 |  |  | MKI |
| 53 | 5.4.7 | Dimenssionnement des tubes | 7d | 2019-10-24 | 2019-10-30 | 33, 52 |  | MKI |
| 54 | 5.4.8 | Dimensionnement des inserts | 7d | 2019-10-31 | 2019-11-06 | 53 |  | MKI |
| 55 | 5.4.9 | Essais collages | 28d | 2019-11-07 | 2019-12-04 | 54 |  | MKI |

Notes:
- 30: Le contacter pour la licence Mecamaster
- 31: A préparer
- 33: Premiers cas de charges
- 34: A voir avec Paul Clozel
- 40: Recherche des éléments où il faut investir du temps
- 41: Etudier la faisabilité d'un frette combiné au moyeu
- 47: Voir Claude Rouelle : pas différents de chaque côté des biellettes
- 52: Concertation LAS, Châssis
- 55: Fatigue

| ID | WBS | Task | Duration | Start | Finish | Predecessors | Complete | Baseline start | Baseline finish | Baseline duration | Resources |
| --- | --- | --- | --- | --- | --- | --- | --- | --- | --- | --- | --- |
| 56 | 5.5 | **Suspension** | 70d | 2019-08-19 | 2019-10-27 |  |  |  |  |  |  |
| 57 | 5.5.1 | Contacter GTE | 7d | 2019-08-19 | 2019-08-25 |  |  |  |  |  | PAX |
| 58 | 5.5.2 | Pivot | 7d | 2019-09-30 | 2019-10-06 |  |  |  |  |  | PAX |
| 59 | 5.5.3 | Basculeurs | 14d | 2019-10-14 | 2019-10-27 |  |  |  |  |  | PAX |
| 60 | 5.6 | **Anti-roulis** | 28d | 2019-09-30 | 2019-10-27 |  |  |  |  |  |  |
| 61 | 5.6.1 | Modèle efforts | 14d | 2019-09-30 | 2019-10-13 |  |  |  |  |  | PAX |
| 62 | 5.6.2 | Dimenssionnement de la barre de torsion | 14d | 2019-10-14 | 2019-10-27 | 61 |  |  |  |  | PAX |
| 63 | 5.6.3 | Couteaux | 14d | 2019-09-30 | 2019-10-13 |  |  |  |  |  | PAX |
| 64 | 5.6.4 | Pivot | 7d | 2019-10-14 | 2019-10-20 | 63 |  |  |  |  | PAX |
| 65 | 5.6.5 | Coussinets | 7d | 2019-10-21 | 2019-10-27 | 64 |  |  |  |  | PAX |
| 66 | 5.7 | **Direction** | 35d | 2019-09-16 | 2019-10-20 |  |  |  |  |  | SGX |
| 67 | 5.7.1 | Cardan | 14d | 2019-09-16 | 2019-09-29 |  |  |  |  |  | SGX |
| 68 | 5.7.2 | Colonne de direction | 7d | 2019-09-30 | 2019-10-06 | 67 |  |  |  |  |  |
| 69 | 5.7.3 | Finalisation cinématique | 7d | 2019-10-07 | 2019-10-13 | 26, 68 |  |  |  |  |  |
| 70 | 5.7.4 | Pivot et manchon | 7d | 2019-10-14 | 2019-10-20 | 69 |  |  |  |  |  |
| 71 | 5.8 | **Freinage** | 21d | 2019-09-16 | 2019-10-06 |  |  |  |  |  | EPZ |
| 72 | 5.8.1 | Répartition freinage | 14d | 2019-09-16 | 2019-09-29 |  |  |  |  |  |  |
| 73 | 5.8.2 | Dimenssionnement disques | 14d | 2019-09-23 | 2019-10-06 |  |  |  |  |  |  |
| 74 | 5.8.3 | Dimenssionnement étrier | 14d | 2019-09-23 | 2019-10-06 |  |  |  |  |  |  |
| 75 | 5.9 | **Pédalier** | 49d | 2019-09-16 | 2019-11-03 |  |  |  |  |  |  |
| 76 | 5.9.1 | Accélérateur | 35d | 2019-09-16 | 2019-10-20 |  |  |  |  |  | JMN |
| 77 | 5.9.2 | Frein | 35d | 2019-09-30 | 2019-11-03 |  |  |  |  |  | JMN |
| 78 | 6 | **Frame** | 100d | 2019-08-12 | 2019-11-19 |  | 10% | 2019-05-08 | 2019-05-18 | 11d |  |
| 79 | 6.1 | **Structure tubulaire** | 98d | 2019-08-12 | 2019-11-17 |  | 23% |  |  |  |  |
| 80 | 6.1.1 | Premières esquisses | 28d | 2019-08-12 | 2019-09-08 |  | 100% |  |  |  | CMI |
| 81 | 6.1.2 | Points de LAS | 21d | 2019-09-09 | 2019-09-29 | 80 | 30% |  |  |  | CMI |
| 82 | 6.1.3 | Moteur - Echappement | 21d | 2019-09-09 | 2019-09-29 | 80 |  |  |  |  | CMI |
| 83 | 6.1.4 | Finalisation filaire | 14d | 2019-09-16 | 2019-09-29 |  |  |  |  |  | CMI |
| 84 | 6.1.5 | Seconde itération | 14d | 2019-09-30 | 2019-10-13 | 81, 82, 83 |  |  |  |  | CMI |
| 85 | 6.1.6 | Vérif règlement | 7d | 2019-10-14 | 2019-10-20 | 84 |  |  |  |  | CMI |
| 86 | 6.1.7 | Raideur en torsions | 14d | 2019-10-14 | 2019-10-27 |  |  |  |  |  | CMI |
| 87 | 6.1.8 | Autres cas de charge | 14d | 2019-10-21 | 2019-11-03 |  |  |  |  |  | CMI |
| 88 | 6.1.9 | Vérif règlement | 14d | 2019-11-04 | 2019-11-17 | 86, 87 |  |  |  |  | CMI |
| 89 | 6.2 | Ergonomie | 62d | 2019-09-17 | 2019-11-17 | 88FF |  |  |  |  | CMI |

Notes:
- 57: Pour la démarche
- 61: Pour la démarche
- 62: Pour la démarche
- 63: Pour la démarche
- 64: Pour la démarche
- 65: Pour la démarche
- 71: En collaboration avec la roue équipée et le pédalier

| ID | WBS | Task | Duration | Start | Finish | Predecessors | Complete | Resources |
| --- | --- | --- | --- | --- | --- | --- | --- | --- |
| 90 | 6.3 | **Equipements** | 58d | 2019-09-23 | 2019-11-19 |  |  |  |
| 91 | 6.3.1 | Suivi des chappes | 58d | 2019-09-23 | 2019-11-19 | 6FF |  | TLS |
| 92 | 6.3.2 | Anti-intrusion plate | 35d | 2019-10-14 | 2019-11-17 | 84 |  | CMI |
| 93 | 6.3.3 | Pare-feu | 35d | 2019-10-14 | 2019-11-17 | 84 |  | CMI |
| 94 | 6.3.4 | Fond plat | 35d | 2019-10-14 | 2019-11-17 | 84 |  | PTS |
| 95 | 7 | **Aéro** | 91d | 2019-08-19 | 2019-11-17 |  | 3% |  |
| 96 | 7.1 | **Fabrication** | 23d | 2019-09-04 | 2019-09-26 |  | 43% |  |
| 97 | 7.1.1 | **Démarchage** | 19d | 2019-09-04 | 2019-09-22 |  | 63% |  |
| 98 | 7.1.1.1 | Rédaction du mail | 7d | 2019-09-04 | 2019-09-10 |  | 100% | ACO |
| 99 | 7.1.1.2 | Recherche de contacts | 19d | 2019-09-04 | 2019-09-22 |  | 50% | ACO |
| 100 | 7.1.2 | **Audit Safran** | 10d | 2019-09-17 | 2019-09-26 |  | 5% |  |
| 101 | 7.1.2.1 | CdCF | 9d | 2019-09-17 | 2019-09-25 | 106SF |  |  |
| 102 | 7.1.2.2 | Méthode d'attache | 9d | 2019-09-17 | 2019-09-25 | 106SF | 25% |  |
| 103 | 7.1.2.3 | Process de production | 9d | 2019-09-17 | 2019-09-25 | 106SF |  |  |
| 104 | 7.1.2.4 | Méthode de simulation | 9d | 2019-09-17 | 2019-09-25 | 106SF |  |  |
| 105 | 7.1.2.5 | Diaporama à faire | 3d | 2019-09-23 | 2019-09-25 | 106SF |  |  |
| 106 | 7.1.2.6 | Audit | 1d | 2019-09-26 | 2019-09-26 |  |  | MJT; ARZ; MRI; ACO; TMN; PTS |
| 107 | 7.2 | **Méthode numérique** | 35d | 2019-08-19 | 2019-09-22 |  |  |  |
| 108 | 7.2.1 | Simulation mécanique | 35d | 2019-08-19 | 2019-09-22 |  |  | NGO |
| 109 | 7.3 | **Carrosserie** | 63d | 2019-09-16 | 2019-11-17 |  |  |  |
| 110 | 7.3.1 | REX et étude concurrence | 14d | 2019-09-16 | 2019-09-29 |  |  | PTS |
| 111 | 7.3.2 | Premier version | 14d | 2019-09-30 | 2019-10-13 | 83, 110 |  | PTS |
| 112 | 7.3.3 | Optimisation aéro | 14d | 2019-10-14 | 2019-10-27 | 111 |  | PTS |
| 113 | 7.3.4 | Seconde itération | 7d | 2019-10-28 | 2019-11-03 | 84, 112 |  | PTS |
| 114 | 7.3.5 | Fixation aéro | 14d | 2019-11-04 | 2019-11-17 | 113 |  | PTS |

Notes:
- 106: 13h30 à 15h

| ID | WBS | Task | Duration | Start | Finish | Predecessors | Complete | Baseline start | Baseline finish | Baseline duration | Resources |
| --- | --- | --- | --- | --- | --- | --- | --- | --- | --- | --- | --- |
| 115 | 7.4 | **Ouies** | 28d | 2019-09-17 | 2019-10-14 |  |  |  |  |  |  |
| 116 | 7.4.1 | Concept ouies | 14d | 2019-09-17 | 2019-09-30 |  |  |  |  |  | PTS |
| 117 | 7.4.2 | Tunnel radiateur | 28d | 2019-09-17 | 2019-10-14 | 116SS |  |  |  |  | PTS |
| 118 | 7.5 | **Aile arrière** | 63d | 2019-09-09 | 2019-11-10 |  | 4% |  |  |  |  |
| 119 | 7.5.1 | Étude aéro | 14d | 2019-09-09 | 2019-09-22 |  |  |  |  |  | MRI; ACO |
| 120 | 7.5.2 | Concept d'attaches | 21d | 2019-09-09 | 2019-09-29 |  | 30% |  |  |  | TMN |
| 121 | 7.5.3 | Méthode de réglage | 14d | 2019-09-16 | 2019-09-29 |  |  |  |  |  | TMN |
| 122 | 7.5.4 | Modèle d'efforts sur l'aile | 7d | 2019-09-30 | 2019-10-06 | 121 |  |  |  |  | TMN |
| 123 | 7.5.5 | Dessin des inserts | 21d | 2019-09-30 | 2019-10-20 | 120, 121 |  |  |  |  | TMN |
| 124 | 7.5.6 | Simulation mécanique | 28d | 2019-10-07 | 2019-11-03 | 106, 108, 122 |  |  |  |  | TMN |
| 125 | 7.5.7 | Calcul de déflection | 28d | 2019-10-14 | 2019-11-10 |  |  |  |  |  | TMN |
| 126 | 7.6 | **Aile avant** | 63d | 2019-09-09 | 2019-11-10 |  |  |  |  |  |  |
| 127 | 7.6.1 | Étude aéro | 56d | 2019-09-09 | 2019-11-03 |  |  |  |  |  | MRI; ACO |
| 128 | 7.6.2 | Concept d'attaches | 28d | 2019-09-09 | 2019-10-06 |  |  |  |  |  | TMN |
| 129 | 7.6.3 | Méthode de réglage | 21d | 2019-09-16 | 2019-10-06 |  |  |  |  |  | TMN |
| 130 | 7.6.4 | Modèle d'efforts sur l'aile | 7d | 2019-10-07 | 2019-10-13 | 129 |  |  |  |  | TMN |
| 131 | 7.6.5 | Dessin des inserts | 21d | 2019-10-07 | 2019-10-27 | 130SS |  |  |  |  | TMN |
| 132 | 7.6.6 | Simulation mécanique | 28d | 2019-10-14 | 2019-11-10 | 106, 108, 130 |  |  |  |  | TMN |
| 133 | 7.6.7 | Calcul de déflection | 21d | 2019-10-14 | 2019-11-03 |  |  |  |  |  | TMN |
| 134 | 7.7 | **Diffuseur** | 56d | 2019-09-09 | 2019-11-03 |  |  |  |  |  |  |
| 135 | 7.7.1 | Concept aéro | 21d | 2019-09-09 | 2019-09-29 |  |  |  |  |  | MRI; ACO |
| 136 | 7.7.2 | Dessin CATIA | 35d | 2019-09-16 | 2019-10-20 |  |  |  |  |  | MRI; ACO |
| 137 | 7.7.3 | Simulation aéro | 42d | 2019-09-23 | 2019-11-03 |  |  |  |  |  | MRI; ACO |
| 138 | 8 | **Motorisation** | 91d | 2019-08-19 | 2019-11-17 |  | 16% | 2019-05-06 | 2019-05-20 | 15d |  |
| 139 | 8.1 | **Admission** | 56d | 2019-09-16 | 2019-11-10 |  |  |  |  |  |  |
| 140 | 8.1.1 | Contact fournisseur | 14d | 2019-09-16 | 2019-09-29 |  |  |  |  |  | TLS |
| 141 | 8.1.2 | Concept bride guillotine | 21d | 2019-09-16 | 2019-10-06 |  |  |  |  |  | TLS |
| 142 | 8.1.3 | Concept plenum admission | 21d | 2019-09-16 | 2019-10-06 |  |  |  |  |  | TLS |
| 143 | 8.1.4 | Etudes aéro | 35d | 2019-09-16 | 2019-10-20 |  |  |  |  |  | TLS |
| 144 | 8.1.5 | Audit Volvo | 7d | 2019-10-21 | 2019-10-27 | 143 |  |  |  |  | TLS |
| 145 | 8.1.6 | Calcul FEM | 7d | 2019-10-21 | 2019-10-27 | 143 |  |  |  |  | TLS |
| 146 | 8.1.7 | Validation Romain | 14d | 2019-10-28 | 2019-11-10 | 145 |  |  |  |  | TLS |
| 147 | 8.1.8 | Validation académiciens | 14d | 2019-10-28 | 2019-11-10 | 145 |  |  |  |  | TLS |

Notes:
- 117: À dessiner / On a besoin du volume enveloppe
- 120: ISAT (rq : l'aile principale de génère que peu de drag donc elle reste fixe) / + Attaches des endplates

| ID | WBS | Task | Duration | Start | Finish | Predecessors | Complete | Resources |
| --- | --- | --- | --- | --- | --- | --- | --- | --- |
| 148 | 8.2 | **Echappement** | 49d | 2019-08-19 | 2019-10-06 |  | 38% |  |
| 149 | 8.2.1 | Contact Bery | 7d | 2019-09-16 | 2019-09-22 |  |  | MJT |
| 150 | 8.2.2 | Concept échappement | 7d | 2019-08-19 | 2019-08-25 |  | 100% | MJT |
| 151 | 8.2.3 | CATIA | 28d | 2019-08-26 | 2019-09-22 | 150 | 70% | MJT |
| 152 | 8.2.4 | Validation Romain | 14d | 2019-09-23 | 2019-10-06 | 151 |  | MJT |
| 153 | 8.2.5 | Validation académiciens | 14d | 2019-09-23 | 2019-10-06 | 151 |  | MJT |
| 154 | 8.3 | **Carto** | 7d | 2019-11-11 | 2019-11-17 |  |  |  |
| 155 | 8.3.1 | Prevoir passage au banc de Givors | 7d | 2019-11-11 | 2019-11-17 | 146, 147, 152, 153 |  | MJT |
| 156 | 8.4 | **Refroidissement** | 42d | 2019-08-26 | 2019-10-06 |  | 60% | ASE |
| 157 | 8.4.1 | Dimensionnement | 21d | 2019-08-26 | 2019-09-15 |  | 100% | ASE |
| 158 | 8.4.2 | Placer les radiateurs | 14d | 2019-09-23 | 2019-10-06 | 157, 167 |  | ASE |
| 159 | 8.5 | **Circuit d'essence** | 56d | 2019-09-16 | 2019-11-10 |  |  | ASE |
| 160 | 8.5.1 | Réservoir | 7d | 2019-09-16 | 2019-09-22 |  |  |  |
| 161 | 8.5.2 | Pompe à essence | 14d | 2019-09-23 | 2019-10-06 | 160 |  |  |
| 162 | 8.5.3 | Circuit d'essence | 14d | 2019-10-07 | 2019-10-20 | 161 |  |  |
| 163 | 8.5.4 | Tuyau de remplissage | 14d | 2019-10-07 | 2019-10-20 | 161 |  |  |
| 164 | 8.5.5 | Modèle CATIA | 21d | 2019-10-21 | 2019-11-10 | 162, 163 |  |  |
| 165 | 8.5.6 | Protection thermique | 7d | 2019-10-21 | 2019-10-27 | 160, 161, 162 |  |  |
| 166 | 8.6 | **Transmission secondaire** | 63d | 2019-09-16 | 2019-11-17 |  |  |  |
| 167 | 8.6.1 | Placer le moteur | 7d | 2019-09-16 | 2019-09-22 |  |  | ASE |
| 168 | 8.6.2 | Piste amélioration | 14d | 2019-09-16 | 2019-09-29 |  |  |  |
| 169 | 8.6.3 | Différentiel | 14d | 2019-09-16 | 2019-09-29 |  |  |  |
| 170 | 8.6.4 | Excentriques | 21d | 2019-09-30 | 2019-10-20 | 169 |  |  |
| 171 | 8.6.5 | Porte-excentriques | 21d | 2019-09-30 | 2019-10-20 | 169 |  |  |
| 172 | 8.6.6 | Rapport de transmission secondaire | 35d | 2019-09-16 | 2019-10-20 |  |  |  |
| 173 | 8.6.7 | Pignon - Couronne | 21d | 2019-09-30 | 2019-10-20 | 172FF |  |  |
| 174 | 8.6.8 | Porte couronne | 14d | 2019-10-21 | 2019-11-03 | 173 |  |  |
| 175 | 8.6.9 | Chainshield | 14d | 2019-11-04 | 2019-11-17 | 174 |  |  |

Notes:
- 158: En lien avec le dessin des ouies de PTS
- 166: Ressources: / ASE et une recrue semble correct et moins risqué que deux recrues. / Une des recrues sera donc affecté au circuit d'essence.
- 174: Discuter avec Bertrand Houx pour usinage à Centrale
- 175: Ne pas lancer la prod, faire un template au fablab d'abord et usiner le crai quand c'est bon

| ID | WBS | Task | Duration | Start | Finish | Predecessors | Complete | Baseline start | Baseline finish | Baseline duration | Resources |
| --- | --- | --- | --- | --- | --- | --- | --- | --- | --- | --- | --- |
| 176 | 9 | **SEISM** | 84d | 2019-09-02 | 2019-11-24 |  | 19% | 2019-05-10 | 2019-05-14 | 5d |  |
| 177 | 9.1 | **Faisceau** | 84d | 2019-09-02 | 2019-11-24 |  | 31% |  |  |  |  |
| 178 | 9.1.1 | Architecture faisceau | 14d | 2019-09-02 | 2019-09-15 |  | 100% |  |  |  | CLS |
| 179 | 9.1.2 | Schema faisceau | 28d | 2019-09-16 | 2019-10-13 | 178 | 100% |  |  |  | CLS |
| 180 | 9.1.3 | Batterie | 14d | 2019-09-30 | 2019-10-13 |  |  |  |  |  | CLS |
| 181 | 9.1.4 | Dimensionnement câble | 14d | 2019-10-07 | 2019-10-20 |  |  |  |  |  | CLS |
| 182 | 9.1.5 | Placer les boîtes | 14d | 2019-10-14 | 2019-10-27 |  |  |  |  |  | CLS |
| 183 | 9.1.6 | Contacter Souriaux | 7d | 2019-09-16 | 2019-09-22 |  |  |  |  |  | CLS |
| 184 | 9.1.7 | Choix connecteur | 14d | 2019-10-14 | 2019-10-27 | 183 |  |  |  |  | CLS |
| 185 | 9.1.8 | Modèle CATIA | 28d | 2019-10-28 | 2019-11-24 | 182, 184 |  |  |  |  | CLS |
| 186 | 9.2 | **Passage de rapport** | 70d | 2019-09-02 | 2019-11-10 |  | 5% |  |  |  |  |
| 187 | 9.2.1 | Dimensionnement moteur | 28d | 2019-09-02 | 2019-09-29 |  | 10% |  |  |  | BMA |
| 188 | 9.2.2 | Dimensionnement réducteur | 28d | 2019-09-02 | 2019-09-29 |  | 10% |  |  |  | BMA |
| 189 | 9.2.3 | Reprendre le code | 28d | 2019-09-30 | 2019-10-27 | 187, 188 |  |  |  |  | BMA |
| 190 | 9.2.4 | Shield | 28d | 2019-10-14 | 2019-11-10 |  |  |  |  |  | BMA |

Notes:
- 179: HV / LV / Acquisition de données
- 188: Choisir entre Atomix et Optimus
- 190: Inclure la connection CAN
